# Planning général Aquedi SIAAP(version avant vacances avril)

Schedule from MS Project, 2021-09-03 to 2022-04-18, A marks actual dates.
Microsoft

## Calendars

- Début 3 septembre: Mon-Fri 09:30-12:30, 14:00-18:00; Sat-Sun off.

## Resources

| Resource |
| --- |
| Lamine Benfradj |
| Florin Samson |
| Dorian Dauphin |
| Samir Haoual |
| Sylvain Cailleau |
| Randa Karamty |
| Benoit Gallou |
| Alpha Bah |
| Bilal Hafersas |

## Schedule

| ID | WBS | Task | Duration | Start | Finish | Complete | Remaining | Total slack | Constraint | Calendar | Resources | Work | Actual work |
| --- | --- | --- | --- | --- | --- | --- | --- | --- | --- | --- | --- | --- | --- |
| 1 | 1 | **Projet Aquedi SIAAP** | 141.62d? | 2021-09-03 09:00 A | 2022-04-18 17:00 | 4% | 135.74d? | 0d |  | Début 3 septembre |  | 4553.5h | 175.53h |
| 2 | 1.1 | **Version 1.9.0.2** | 29.75d? | 2021-12-13 09:30 A | 2022-01-27 18:00 | 19% | 24.06d? | 49.75d |  | Début 3 septembre |  | 183h | 35h |
| 3 | 1.1.1 | SEC12 - Purge des données et des variables fumées présentes sur l’environnement à déployer | 0.5d? | 2022-01-05 09:30 | 2022-01-05 15:00 |  |  | 64.12d | start no earlier than 2022-01-05 06:00 | Début 3 septembre | Sylvain Cailleau | 4h |  |
| 4 | 1.1.2 | SEC13 - Plage horaire spécifique aux variables fumées - Frontend | 0.88d? | 2021-12-22 09:30 | 2021-12-22 18:00 |  |  | 72.5d | start no earlier than 2021-12-22 09:00 | Début 3 septembre | Benoit Gallou | 7h |  |
| 5 | 1.1.3 | SEC14 - Affichage unique de la ligne des moyennes titrée Valeur journalière | 1.75d? | 2021-12-20 09:30 | 2021-12-21 18:00 |  |  | 73.38d | start no earlier than 2021-12-20 09:00 | Début 3 septembre | Benoit Gallou | 14h |  |
| 6 | 1.1.4 | SEC16 - Gestion de la largeur des colonnes | 0.5d? | 2021-12-17 09:30 | 2021-12-17 15:00 |  |  | 75.5d | start no earlier than 2021-12-17 09:00 | Début 3 septembre | Benoit Gallou | 4h |  |
| 7 | 1.1.5 | SEC17 - Export des données éditéées - Frontend | 0.38d? | 2021-12-14 09:30 | 2021-12-14 12:30 |  |  | 78.25d | start no earlier than 2021-12-14 09:00 | Début 3 septembre | Benoit Gallou | 3h |  |
| 8 | 1.1.6 | SEC17 - Export des données éditéées - Backend = ticket 1940 | 1.75d? | 2021-12-15 09:30 A | 2021-12-22 18:00 A | 100% |  |  | start no earlier than 2021-12-15 09:00 | Début 3 septembre | Bilal Hafersas | 14h | 14h |
| 9 | 1.1.7 | SEC18 - Conversion des valeurs de type durée lors de l'export de donnée - Backend | 1.75d? | 2021-12-27 09:30 | 2021-12-28 18:00 |  |  | 69d | start no earlier than 2021-12-27 09:00 | Début 3 septembre | Lamine Benfradj | 14h |  |
| 10 | 1.1.8 | SEC18 - Conversion des valeurs de type durée lors de l'export de donnée - Frontend | 0.38d? | 2021-12-17 09:30 | 2021-12-17 12:30 |  |  | 75.62d | start no earlier than 2021-12-17 09:00 | Début 3 septembre | Benoit Gallou | 3h |  |
| 11 | 1.1.9 | SEC19 - Visualisation de l’historisation des données fumées | 0.88d? | 2021-12-13 09:30 | 2021-12-13 18:00 |  |  | 78.62d | start no earlier than 2021-12-13 09:00 | Début 3 septembre | Benoit Gallou | 7h |  |
| 12 | 1.1.10 | SEC20 - Correction de la fonctionnalité Valorisation générale des données | 0.5d? | 2021-12-14 09:30 | 2021-12-14 15:00 |  |  | 78.12d | start no earlier than 2021-12-14 09:00 | Début 3 septembre | Benoit Gallou | 4h |  |
| 13 | 1.1.11 | **Support** | 28d? | 2021-12-15 09:30 A | 2022-01-27 18:00 | 30% | 19.6d? | 49.75d |  | Début 3 septembre |  | 70h | 21h |
| 14 | 1.1.11.1 | Ticket 2080 - Edition des données : les exports Excel et PDF des valeurs Heure sont faux | 2.25d? | 2022-01-21 09:30 | 2022-01-27 18:00 |  |  | 49.75d | start no earlier than 2022-01-21 09:00 | Début 3 septembre | Bilal Hafersas | 18h |  |
| 15 | 1.1.11.2 | Ticket 2067 - Edition des données : export Excel valeurs texte incomplète | 1.25d? | 2021-12-30 09:30 | 2021-12-31 12:30 |  |  | 66.88d | start no earlier than 2021-12-30 09:00 | Début 3 septembre | Bilal Hafersas | 10h |  |
| 16 | 1.1.11.3 | Ticket 2079 - Liste des évènements : export Excel vide | 0.88d? | 2022-01-07 09:30 | 2022-01-07 18:00 |  |  | 62d | start no earlier than 2022-01-07 09:00 | Début 3 septembre | Bilal Hafersas | 7h |  |
| 17 | 1.1.11.4 | Ticket 1970 - Export des données depuis édition/validation | 2.62d? | 2021-12-23 09:30 A | 2021-12-29 18:00 A | 100% |  |  | start no earlier than 2021-12-23 09:00 | Début 3 septembre | Bilal Hafersas | 21h | 21h |
| 18 | 1.1.11.5 | Ticket 1940 - Export des données | 1.75d? | 2021-12-15 09:30 | 2021-12-16 18:00 |  |  | 76d | start no earlier than 2021-12-15 09:00 | Début 3 septembre | Benoit Gallou | 14h |  |
| 19 | 1.1.12 | **Relivraison du module des données fumées** | 10.5d? | 2021-12-20 09:30 | 2022-01-04 18:00 |  |  | 64.62d |  | Début 3 septembre |  | 39h |  |
| 20 | 1.1.12.1 | SEC13 - Plage horaire spécifique aux variables fumées - Backend | 2.62d? | 2021-12-21 09:30 | 2022-01-04 18:00 |  |  | 64.62d | start no earlier than 2021-12-21 09:00 | Début 3 septembre | Florin Samson | 21h |  |
| 21 | 1.1.12.2 | SEC15 - Gestion spécifique des heure d’ouverture | 1.38d? | 2021-12-22 09:30 | 2021-12-24 15:00 |  |  | 71.12d | start no earlier than 2021-12-22 09:00 | Début 3 septembre | Florin Samson | 11h |  |
| 22 | 1.1.12.3 | SEC11 - Correction du script d'injection des données fumées | 0.88d? | 2021-12-20 09:30 | 2021-12-20 18:00 |  |  | 74.25d | start no earlier than 2021-12-20 09:00 | Début 3 septembre | Florin Samson | 7h |  |
| 23 | 1.2 | **Version 1.9.0.3** | 22.75d? | 2021-12-16 09:30 A | 2022-01-20 18:00 | 24% | 17.32d? | 54.12d |  |  |  | 67h | 18h |
| 24 | 1.2.1 | Déploiement / intégration 1.9.0.3 | 0.88d? | 2022-01-20 09:30 | 2022-01-20 18:00 |  |  | 54.12d | start no earlier than 2022-01-20 09:00 | Début 3 septembre | Sylvain Cailleau [42.9%] | 3h |  |
| 25 | 1.2.2 | Recette interne 1.9.0.3 | 0.88d? | 2022-01-18 09:30 | 2022-01-18 18:00 |  |  | 55.88d | start no earlier than 2022-01-18 09:00 | Début 3 septembre | Benoit Gallou | 7h |  |

| ID | WBS | Task | Duration | Start | Finish | Predecessors | Complete | Remaining | Total slack | Free slack | Constraint | Calendar | Resources | Work | Actual work |
| --- | --- | --- | --- | --- | --- | --- | --- | --- | --- | --- | --- | --- | --- | --- | --- |
| 26 | 1.2.3 | **Support** | 3.12d? | 2022-01-14 14:00 | 2022-01-19 18:00 |  |  |  | 55d |  |  | Début 3 septembre |  | 25h |  |
| 27 | 1.2.3.1 | Ticket 2189 - Correctifs données fumées post 1.9.0.2 Bug A : lignes "Valeurs journalières" vides | 0.88d? | 2022-01-19 09:30 | 2022-01-19 18:00 |  |  |  | 55d |  | start no earlier than 2022-01-19 09:00 | Début 3 septembre | Florin Samson | 7h |  |
| 28 | 1.2.3.2 | Ticket 2044 - Frontend - Formulaires Lot A BaSta : absents, incomplet et sans affichage des données | 0.88d? | 2022-01-17 09:30 | 2022-01-17 18:00 |  |  |  | 56.75d |  | start no earlier than 2022-01-17 09:00 | Début 3 septembre | Dorian Dauphin | 7h |  |
| 29 | 1.2.3.3 | Ticket 2172 - Correctifs données fumées post 1.9.0.2 | 1.38d? | 2022-01-14 14:00 | 2022-01-17 18:00 |  |  |  | 56.75d |  | start no earlier than 2022-01-14 14:00 | Début 3 septembre | Florin Samson | 11h |  |
| 30 | 1.2.4 | **Dette technique** | 21.88d? | 2021-12-16 09:30 A | 2022-01-19 18:00 |  | 43% | 12.5d? | 55d |  |  | Début 3 septembre |  | 32h | 18h |
| 31 | 1.2.4.1 | Ticket interne 2172 - Correctifs données fumées post 1.9.0.2 Bug B - Exports excel avec variables de type durée KO | 0.88d? | 2022-01-19 09:30 | 2022-01-19 18:00 |  |  |  | 55d |  | start no earlier than 2022-01-19 09:00 | Début 3 septembre | Lamine Benfradj [57.1%] | 4h |  |
| 32 | 1.2.4.2 | Bug interne - Problème des export automatiques pour le format XML | 0.88d? | 2021-12-16 09:30 A | 2021-12-16 18:00 A |  | 100% |  |  |  | start no earlier than 2021-12-16 09:00 | Début 3 septembre | Bilal Hafersas | 7h | 7h |
| 33 | 1.2.4.3 | Bug interne - Visualisation des configs d'import selon les droits du site | 0.88d? | 2021-12-29 09:30 | 2021-12-29 18:00 |  |  |  | 68.12d |  | start no earlier than 2021-12-29 09:00 | Début 3 septembre | Lamine Benfradj [42.9%] | 3h |  |
| 34 | 1.2.4.4 | Dette technique - Export des données éditées d'une liste de variable sandre | 0.88d? | 2021-12-29 09:30 | 2021-12-29 18:00 |  |  |  | 68.12d |  | start no earlier than 2021-12-29 09:00 | Début 3 septembre | Lamine Benfradj [57.1%] | 4h |  |
| 35 | 1.2.4.5 | Bug interne - Ajout d'une colonne "Site" sur l'écran des Unités de Mesure | 0.88d? | 2021-12-22 09:30 A | 2021-12-22 18:00 A |  | 100% |  |  |  | start no earlier than 2021-12-22 09:00 | Début 3 septembre | Lamine Benfradj [57.1%] | 4h | 4h |
| 36 | 1.2.4.6 | Bug interne - Ecran des graphiques > Le WS pour lire les variables d'un dossier ne fonctionne pas - Backend | 0.88d? | 2021-12-22 09:30 | 2021-12-22 18:00 |  |  |  | 72.5d |  | start no earlier than 2021-12-22 09:00 | Début 3 septembre | Lamine Benfradj [42.9%] | 3h |  |
| 37 | 1.2.4.7 | Bug interne – Import des variables fumées – l’attribut isFumée n’est pas pris en compte | 0.88d? | 2021-12-17 09:30 A | 2021-12-17 18:00 A |  | 100% |  |  |  | start no earlier than 2021-12-17 09:00 | Début 3 septembre | Bilal Hafersas | 7h | 7h |
| 38 | 1.3 | **Congés ponctuels** | 106.75d? | 2021-10-11 09:30 | 2022-03-29 18:00 |  |  |  | 12.12d |  |  |  |  | 109.5h |  |
| 39 | 1.3.1 | Congés ponctuels de Benoit | 6.56d? | 2021-12-02 09:30 | 2022-03-22 12:30 |  |  |  | 17d |  | start no earlier than 2021-12-02 09:00 | Début 3 septembre | Benoit Gallou | 52.5h |  |
| 40 | 1.3.2 | Congés ponctuels de Florin | 5.12d? | 2021-12-14 09:30 | 2022-03-29 18:00 |  |  |  | 12.12d |  | start no earlier than 2021-12-14 09:00 | Début 3 septembre | Florin Samson | 41h |  |
| 41 | 1.3.3 | Vaccin Lamine | 0.38d? | 2022-01-05 09:30 | 2022-01-05 12:30 |  |  |  | 64.25d |  | start no earlier than 2022-01-05 09:00 | Début 3 septembre | Lamine Benfradj | 3h |  |
| 42 | 1.3.4 | Congé ponctuels de Lamine | 1.62d? | 2021-10-11 09:30 | 2022-03-02 18:00 |  |  |  | 28.75d |  | start no earlier than 2021-10-11 09:00 | Début 3 septembre | Lamine Benfradj | 13h |  |
| 43 | 1.4 | **Version 1.9.1.1** | 31.5d? | 2022-02-03 09:30 | 2022-03-24 18:00 |  |  |  | 14.75d |  |  | Début 3 septembre |  | 163h |  |
| 44 | 1.4.1 | **Déploiement** | 2.12d? | 2022-03-14 09:30 | 2022-03-16 12:30 |  |  |  | 20.5d |  |  | Début 3 septembre |  | 17h |  |
| 45 | 1.4.1.1 | Création packages version 1.9.1.1 + 1.9.0.4.2 | 2.12d? | 2022-03-14 09:30 | 2022-03-16 12:30 |  |  |  | 20.5d |  | start no earlier than 2022-03-14 09:00 | Début 3 septembre | Florin Samson | 17h |  |
| 46 | 1.4.2 | **Support** | 31.5d? | 2022-02-03 09:30 | 2022-03-24 18:00 |  |  |  | 14.75d |  |  | Début 3 septembre |  | 146h |  |
| 47 | 1.4.2.1 | Ticket 2468 - Export des données fumées mensuelles au format hh:mm KO | 0.88d? | 2022-02-18 09:30 | 2022-02-18 18:00 |  |  |  | 35.75d |  | start no earlier than 2022-02-18 09:00 | Début 3 septembre | Lamine Benfradj | 7h |  |
| 48 | 1.4.2.2 | Ticket 2615 - Import Supervision SAV - Plus d'import depuis le 19/03 | 0.5d? | 2022-03-21 09:30 | 2022-03-21 15:00 |  |  |  | 17.75d |  | start no earlier than 2022-03-21 09:00 | Début 3 septembre | Sylvain Cailleau | 4h |  |
| 49 | 1.4.2.3 | Ticket 2487 - INTERNE - Imports CSV MAV SEM KO | 0.88d? | 2022-02-04 09:30 | 2022-02-04 18:00 |  |  |  | 44.5d |  | start no earlier than 2022-02-04 09:00 | Début 3 septembre | Sylvain Cailleau | 7h |  |
| 50 | 1.4.2.4 | Ticket 2586 - Sylvain - Import LIMS SEM et MAV KO | 1.62d? | 2022-03-21 09:30 | 2022-03-24 18:00 |  |  |  | 9.5d | 0.38d | start no earlier than 2022-03-21 09:00 | Début 3 septembre | Sylvain Cailleau | 13h |  |
| 51 | 1.4.2.5 | Ticket 2621 - INTERNE - Minimiser les logs de l'ordonnanceur en cas de blocage de l'application | 0.38d? | 2022-03-22 09:30 | 2022-03-22 12:30 |  |  |  | 17d |  | start no earlier than 2022-03-22 09:00 | Début 3 septembre | Sylvain Cailleau | 3h |  |
| 52 | 1.4.2.6 | Ticket 2612 - Dossiers de variables et formulaires ne s'affichant pas | 0.5d? | 2022-03-22 09:30 | 2022-03-22 15:00 |  |  |  | 16.88d |  | start no earlier than 2022-03-22 09:00 | Début 3 septembre | Sylvain Cailleau | 4h |  |
| 53 | 1.4.2.7 | Ticket 2367 - Import Supervision SAV - Fox BioSav zones J et M : données non importées | 1.25d? | 2022-02-25 09:30 | 2022-02-28 12:30 |  |  |  | 29.25d | 0d | start no earlier than 2022-02-25 09:00 | Début 3 septembre | Sylvain Cailleau | 10h |  |
| 54 | 1.4.2.8 | Ticket 2444 - Mails Aquedi envoyés par erreur vers users MAV/SEM | 0.88d? | 2022-02-22 09:30 | 2022-02-22 18:00 |  |  |  | 34d |  | start no earlier than 2022-02-22 09:00 | Début 3 septembre | Sylvain Cailleau [42.9%] | 3h |  |
| 55 | 1.4.2.9 | Ticket 2366 - Import Supervision SAV - Fox BioSav minute : données non importées | 1.38d? | 2022-02-03 09:30 | 2022-02-24 18:00 |  |  |  | 32.25d |  | start no earlier than 2022-02-03 09:00 | Début 3 septembre | Sylvain Cailleau | 11h |  |
| 56 | 1.4.2.10 | Ticket 2191 - Import Supervision SAV : valeurs différentes entre BaSta et Aquedi | 1.25d? | 2022-02-15 09:30 | 2022-02-16 12:30 |  |  |  | 38d |  | start no earlier than 2022-02-15 09:00 | Début 3 septembre | Sylvain Cailleau | 10h |  |
| 57 | 1.4.2.11 | Ticket 2517 - FrontEnd - Déplacements de dossier de variables KO en production | 1.25d? | 2022-03-01 09:30 | 2022-03-02 12:30 |  |  |  | 29.25d |  | start no earlier than 2022-03-01 09:00 | Début 3 septembre | Benoit Gallou | 10h |  |
| 58 | 1.4.2.12 | Ticket 2517 - BackEnd - Déplacements de dossier de variables KO en production | 1.75d? | 2022-03-03 09:30 | 2022-03-04 18:00 | 63 |  |  | 1.25d | 0.88d |  | Début 3 septembre | Florin Samson | 14h |  |
| 59 | 1.4.2.13 | Ticket 2498 - Bilan Lot 0A "Indicateurs fonctionnement digestion" :impossible de généré le bilan de septembre 2021 | 0.88d? | 2022-03-02 14:00 | 2022-03-03 12:30 |  |  |  | 27.5d | 0d | start no earlier than 2022-03-02 14:00 | Début 3 septembre | Sylvain Cailleau | 7h |  |
| 60 | 1.4.2.14 | Ticket 2402 - Formulaire Lot 0A "Suivi du milieu naturel" : cellules sans données | 0.88d? | 2022-03-01 14:00 | 2022-03-02 12:30 | 203 |  |  | 29.25d |  | start no earlier than 2022-03-01 09:00 | Début 3 septembre | Sylvain Cailleau | 7h |  |
| 61 | 1.4.2.15 | Ticket 2547 - Import LIMS ponctuel | 0.5d? | 2022-03-08 09:30 | 2022-03-08 15:00 |  |  |  | 24.38d | 0d | start no earlier than 2022-03-08 09:00 | Début 3 septembre | Sylvain Cailleau | 4h |  |
| 62 | 1.4.2.16 | Ticket 2471 - Import Saisie BaSta : erreur d'import | 0.88d? | 2022-03-03 14:00 | 2022-03-04 12:30 | 59 |  |  | 27.5d |  | start no earlier than 2022-03-03 09:00 | Début 3 septembre | Sylvain Cailleau | 7h |  |
| 63 | 1.4.2.17 | Ticket 2506 - INTERNE - Exports automatiques envoyé par mail - Case à cocher "Me l'assigner" toujours cochée | 1.38d? | 2022-03-01 14:00 | 2022-03-02 18:00 | 256 |  |  | 1.25d | 0d | start no earlier than 2022-02-28 09:00 | Début 3 septembre | Florin Samson | 11h |  |
| 64 | 1.4.2.18 | Ticket 1881 - Export automatique groupe de variables | 1.75d? | 2022-03-02 09:30 | 2022-03-03 18:00 |  |  |  | 27.88d |  | start no earlier than 2022-03-02 09:00 | Début 3 septembre | Bilal Hafersas | 14h |  |

| ID | WBS | Task | Duration | Start | Finish | Predecessors | Total slack | Free slack | Constraint | Calendar | Resources | Work |
| --- | --- | --- | --- | --- | --- | --- | --- | --- | --- | --- | --- | --- |
| 65 | 1.5 | **Autres projets** | 93.25d? | 2021-11-01 09:30 | 2022-03-29 15:00 |  | 12.5d |  |  | Début 3 septembre |  | 214h |
| 66 | 1.5.1 | Projet KarbonPath - Benoit | 4.38d? | 2022-02-16 09:30 | 2022-03-29 15:00 |  | 12.5d |  | start no earlier than 2022-02-16 09:00 | Début 3 septembre | Benoit Gallou | 35h |
| 67 | 1.5.2 | Projet TEGG - Benoit | 3.88d? | 2021-11-25 09:30 | 2022-02-08 18:00 |  | 42.75d |  | start no earlier than 2021-11-25 09:00 | Début 3 septembre | Benoit Gallou | 31h |
| 68 | 1.5.3 | Projet PQF | 4.38d? | 2022-03-14 09:30 | 2022-03-18 18:00 |  | 18.25d |  | start no earlier than 2022-03-14 09:00 | Début 3 septembre | Dorian Dauphin | 35h |
| 69 | 1.5.4 | Projet Collins | 1.25d? | 2022-01-24 09:30 | 2022-01-25 12:30 |  | 52d |  | start no earlier than 2022-01-24 09:00 | Début 3 septembre | Dorian Dauphin | 10h |
| 70 | 1.5.5 | Projet REGIEBOX | 1.75d? | 2021-11-01 09:30 | 2022-02-24 18:00 |  | 32.25d |  | finish no earlier than 2022-02-24 18:00 |  | Lamine Benfradj | 14h |
| 71 | 1.5.6 | Projet TEGG - Lamine | 2.25d? | 2021-11-25 09:30 | 2021-11-29 15:00 |  | 87.75d |  | start no earlier than 2021-11-25 09:00 | Début 3 septembre | Lamine Benfradj | 18h |
| 72 | 1.5.7 | Projet PQF | 1d? | 2021-11-19 14:00 | 2021-11-26 15:00 |  | 88.62d |  | start no earlier than 2021-11-19 13:00 |  | Benoit Gallou | 8h |
| 73 | 1.5.8 | Projet TEGG - Florin | 7.88d | 2021-11-24 09:30 | 2021-12-08 15:00 |  | 81.62d |  | start no earlier than 2021-11-24 09:00 | Début 3 septembre | Florin Samson | 63h |
| 74 | 1.6 | **Version 1.9.1.2** | 1.75d? | 2022-03-31 09:30 | 2022-04-01 18:00 |  | 9.5d |  |  | Début 3 septembre |  | 14h |
| 75 | 1.6.1 | Ticket 2228 - Format de valeur | 0.88d? | 2022-03-31 09:30 | 2022-03-31 18:00 |  | 10.38d |  | start no earlier than 2022-03-31 09:00 | Début 3 septembre | Bilal Hafersas | 7h |
| 76 | 1.6.2 | Ticket 2653 - Impossible d'enregistrer un nombre maximum de décimales à 0 | 0.88d? | 2022-04-01 09:30 | 2022-04-01 18:00 |  | 9.5d |  | start no earlier than 2022-04-01 09:00 | Début 3 septembre | Bilal Hafersas | 7h |
| 77 | 1.7 | **Version 1.9.3** | 31.38d? | 2022-02-28 09:30 | 2022-04-18 17:00 |  | 0d |  |  | Début 3 septembre |  | 235h |
| 78 | 1.7.1 | SAV17 - Backend - Implémentation de la zone de texte enrichi au sein des formulaires personnalisables | 8.75d? | 2022-03-08 09:30 | 2022-04-11 12:30 | 58 | 0.38d | 0d | start no earlier than 2022-03-08 09:00 | Début 3 septembre | Florin Samson | 70h |
| 79 | 1.7.2 | SAV18 - Frontend - Implémentation de la Zone de texte enrichi sur les bilans générés | 5.75d? | 2022-03-30 09:30 | 2022-04-07 15:00 |  | 6.38d |  | start no earlier than 2022-03-30 09:00 | Début 3 septembre | Dorian Dauphin | 46h |
| 80 | 1.7.3 | SAV17 - Frontend - Implémentation de la zone de texte enrichi sur l'application web | 7.5d? | 2022-02-28 09:30 | 2022-03-29 15:00 |  | 12.5d |  | start no earlier than 2022-02-28 09:00 | Début 3 septembre | Dorian Dauphin | 60h |
| 81 | 1.7.4 | Ticket 2451 - lenteur importante sur l'outil au moment de créer des dossiers de variables personnel de 30 variables | 1.75d? | 2022-03-23 09:30 | 2022-04-06 15:00 |  | 7.25d |  | start no earlier than 2022-03-23 09:00 | Début 3 septembre | Bilal Hafersas | 14h |
| 82 | 1.7.5 | SAV18 - Implémentation de la zone de texte enrichi sur les bilans générés | 4.38d? | 2022-04-11 14:00 | 2022-04-18 12:30 | 78 | 0.38d |  |  | Début 3 septembre | Florin Samson | 35h |
| 83 | 1.7.6 | Création d'un script d'extraction des données de production relative à une usine | 1.25d? | 2022-03-18 09:30 | 2022-04-18 17:00 |  | 0d |  | start no earlier than 2022-03-18 09:00 | Début 3 septembre | Florin Samson | 10h |
| 84 | 1.8 | **Encadrements** | 120.75d? | 2021-09-27 09:30 | 2022-04-06 18:00 |  | 6.88d |  |  |  |  | 114h |
| 85 | 1.8.1 | Encadrement de Bilal | 0.88d? | 2021-12-30 09:30 | 2021-12-30 18:00 |  | 67.25d |  | start no earlier than 2021-12-30 09:00 | Début 3 septembre | Lamine Benfradj [42.9%] | 3h |
| 86 | 1.8.2 | Encadrement Bilal et Samir par Lamine | 11.5d? | 2021-09-30 09:30 | 2022-04-06 18:00 |  | 6.88d |  | start no earlier than 2021-09-30 09:00 | Début 3 septembre | Lamine Benfradj | 92h |
| 87 | 1.8.3 | Révision des fiches de tests | 1.38d? | 2021-11-29 09:30 | 2021-11-30 18:00 |  | 86.5d |  | start no earlier than 2021-11-29 09:00 | Début 3 septembre | Benoit Gallou | 11h |
| 88 | 1.8.4 | Encadrement Bilal et Samir par Florin | 0.5d? | 2021-09-27 09:30 | 2021-09-27 15:00 |  | 110.62d | 0d | start no earlier than 2021-09-27 09:00 | Début 3 septembre | Florin Samson | 4h |
| 89 | 1.8.5 | MAJ Documentation (manuel, doc de formations...) | 0.5d? | 2021-10-05 09:30 | 2021-10-05 15:00 |  | 121.88d |  | start no earlier than 2021-10-05 09:00 | Début 3 septembre | Benoit Gallou | 4h |

| ID | WBS | Task | Duration | Start | Finish | Predecessors | Complete | Remaining | Total slack | Free slack | Constraint | Deadline | Calendar | Resources | Work | Actual work |
| --- | --- | --- | --- | --- | --- | --- | --- | --- | --- | --- | --- | --- | --- | --- | --- | --- |
| 90 | 1.9 | **Version 1.8.5** | 10.5d? | 2021-09-03 09:00 A | 2021-09-20 18:00 |  | 3% | 10.17d? | -0.88d | 0d |  |  | Début 3 septembre |  | 126.5h | 4h |
| 91 | 1.9.1 | Gestion des unités de mesure spécifique pour chaque usine - Frontend | 2.62d | 2021-09-08 09:30 | 2021-09-10 18:00 | 96 |  |  | 4.38d |  |  |  | Début 3 septembre | Dorian Dauphin | 21h |  |
| 92 | 1.9.2 | Gestion des unités de mesure spécifique pour chaque usine - Tests par Randa | 1.31d? | 2021-09-09 09:30 | 2021-09-10 14:30 |  |  |  | 4.81d |  | start no earlier than 2021-09-09 09:00 |  |  | Randa Karamty | 10.5h |  |
| 93 | 1.9.3 | DE 1629 - Gestion des unités de mesure spécifique pour chaque usine - Backend et recette interne | 4.88d? | 2021-09-08 09:30 | 2021-09-16 15:00 |  |  |  | 1.25d |  | start no earlier than 2021-09-08 06:00 |  | Début 3 septembre | Sylvain Cailleau | 39h |  |
| 94 | 1.9.4 | Ticket 1755 - Impossibilité de générer es rapports dans l'environnement de préprod | 0.88d? | 2021-09-13 09:30 | 2021-09-13 18:00 |  |  |  | 3.5d |  | start no earlier than 2021-09-13 09:00 |  | Début 3 septembre | Sylvain Cailleau | 7h |  |
| 95 | 1.9.5 | Ticket 1603 - Problème d'envois de mails liés aux exports automatiques | 1.75d | 2021-09-17 09:30 | 2021-09-20 18:00 |  |  |  | -0.88d | 0d | start no earlier than 2021-09-17 09:00 |  | Début 3 septembre | Sylvain Cailleau | 14h |  |
| 96 | 1.9.6 | Refonte formulaires - Frontend | 2.62d | 2021-09-03 09:30 | 2021-09-07 18:00 |  |  |  | 4.38d | 0d |  |  |  | Dorian Dauphin | 21h |  |
| 97 | 1.9.7 | Atelier technico fonctionnel SAV | 0.88d? | 2021-09-16 09:30 | 2021-09-16 18:00 |  |  |  | 0.88d |  | start no earlier than 2021-09-16 09:00 |  | Début 3 septembre | Sylvain Cailleau [42.9%] | 3h |  |
| 98 | 1.9.8 | Erreur interne lors de la sélection d'un groupe de formulaires | 4h | 2021-09-03 09:00 A | 2021-09-03 14:30 A |  | 100% |  |  |  |  |  |  | Samir Haoual | 4h | 4h |
| 99 | 1.9.9 | Recherche via métadonnées - Tests | 4h | 2021-09-14 09:30 | 2021-09-14 15:00 |  |  |  | 3d |  | start no earlier than 2021-09-14 09:00 |  |  | Randa Karamty | 7h |  |
| 100 | 1.10 | **Version 1.8.6** | 36.75d? | 2021-09-20 09:00 A | 2021-11-16 18:00 | 90 | 19% | 29.66d? | 95.25d |  |  |  | Début 3 septembre |  | 259h | 52.53h |
| 101 | 1.10.1 | Tests - DT01 - Refonte formulaire (lié à SAV19) | 2.62d | 2021-09-22 09:30 | 2021-09-24 18:00 |  |  |  | 127.62d |  | start no earlier than 2021-09-22 09:27 |  | Début 3 septembre | Randa Karamty | 21h |  |
| 102 | 1.10.2 | **Formations** | 11.88d? | 2021-09-20 09:00 A | 2021-10-07 15:00 |  | 37% | 7.43d? | 120.12d |  |  |  |  |  | 48.5h | 27.5h |
| 103 | 1.10.2.1 | Formation Modélisation des bilans | 13.5h | 2021-09-27 09:00 A | 2021-10-07 12:30 |  | 26% | 10h | 120.25d |  | start no earlier than 2021-09-27 09:00 |  |  | Sylvain Cailleau | 13.5h | 3.5h |
| 104 | 1.10.2.2 | Présentation de l’architecture technique du projet et du MCD à Samir et Bilal | 7.5h | 2021-09-21 09:00 A | 2021-09-21 18:00 A |  | 100% |  |  |  |  |  |  | Sylvain Cailleau | 3h | 3h |
| 105 | 1.10.2.3 | Préparation Formation Utilisateur standard | 2.81d | 2021-09-20 09:00 A | 2021-09-23 18:00 A |  | 100% |  |  |  | finish no earlier than 2021-09-21 18:00 | 2021-09-21 18:00 | Début 3 septembre | Benoit Gallou | 21h | 21h |
| 106 | 1.10.2.4 | Préparation Formation Administrateur | 5.75d? | 2021-09-29 09:30 | 2021-10-07 15:00 |  |  |  | 53.75d |  | start no earlier than 2021-09-29 09:00 | 2021-12-31 18:00 | Début 3 septembre | Benoit Gallou | 11h |  |
| 107 | 1.10.3 | **Gestion des environnents** | 35.88d? | 2021-09-21 09:30 A | 2021-11-16 18:00 |  | 27% | 26.18d? | 95.25d |  |  |  |  |  | 37h | 10h |
| 108 | 1.10.3.1 | Préparation de l’environnement 1.8.6 (injection des Ums) | 1d? | 2021-10-11 09:30 | 2021-10-12 18:00 |  |  |  | 117.12d |  | start no earlier than 2021-10-11 09:00 |  | Début 3 septembre | Lamine Benfradj | 8h |  |
| 109 | 1.10.3.2 | Rédaction documentation 1.8.6 | 0.38d? | 2021-10-15 09:30 | 2021-10-15 12:30 |  |  |  | 115d |  | start no earlier than 2021-10-15 09:00 |  |  | Benoit Gallou | 3h |  |
| 110 | 1.10.3.3 | Déploiement version 1.9.0 en préprod + déploiement version 1.8.6 en production + Déploiement version 1.9.f sur environnement de test | 0.88d? | 2021-11-16 09:30 | 2021-11-16 18:00 |  |  |  | 95.25d |  | start no earlier than 2021-11-16 09:00 |  | Début 3 septembre | Sylvain Cailleau | 7h |  |
| 111 | 1.10.3.4 | Intégration des données SEC sur l’environnement Dev pour relivraison des formulaires à SEC | 1.25d? | 2021-10-07 09:30 A | 2021-10-08 18:00 A |  | 100% |  |  |  | start no earlier than 2021-10-07 09:00 |  | Début 3 septembre | Bilal Hafersas | 10h | 10h |
| 112 | 1.10.3.5 | Préparation de la mise en production de la 1.8.6 | 0.38d? | 2021-10-11 09:30 | 2021-10-11 12:30 |  |  |  | 118.5d |  | start no earlier than 2021-10-11 09:00 |  | Début 3 septembre | Sylvain Cailleau | 3h |  |
| 113 | 1.10.3.6 | Déploiements (Aquedi 1.8.5, environnement de test pour les formations, Aquedi 1.8.6) | 4h | 2021-09-21 09:30 | 2021-09-21 15:00 |  |  |  | 130.62d |  | start no earlier than 2021-09-21 09:00 |  |  | Sylvain Cailleau | 4h |  |
| 114 | 1.10.3.7 | Déploiement environnement de test 1.9.0 | 2h | 2021-09-22 09:30 | 2021-09-22 11:30 |  |  |  | 130d |  | start no earlier than 2021-09-22 09:00 |  | Début 3 septembre | Sylvain Cailleau | 2h |  |

| ID | WBS | Task | Duration | Start | Finish | Complete | Remaining | Total slack | Constraint | Calendar | Resources | Work | Actual work |
| --- | --- | --- | --- | --- | --- | --- | --- | --- | --- | --- | --- | --- | --- |
| 115 | 1.10.4 | **Support** | 9.62d? | 2021-09-22 09:30 A | 2021-10-06 18:00 | 70% | 2.89d? | 120.62d |  |  |  | 5.5h | 3.5h |
| 116 | 1.10.4.1 | Ticket 1814 - Absence de remontée de code variable en cas d’erreur de conversion | 0.88d? | 2021-10-06 09:30 A | 2021-10-06 18:00 A | 100% |  |  | start no earlier than 2021-10-06 09:00 |  | Bilal Hafersas | 3.5h | 3.5h |
| 117 | 1.10.4.2 | Ticket 1775 Appel Webservice Agilims test | 3h | 2021-09-22 09:30 | 2021-09-22 12:30 |  |  | 129.88d | start no earlier than 2021-09-22 09:00 | Début 3 septembre | Sylvain Cailleau | 2h |  |
| 118 | 1.10.5 | **Bugs internes** | 27.5d? | 2021-09-23 09:00 A | 2021-11-05 12:30 | 8% | 25.19d? | 101.88d |  |  |  | 147h | 11.53h |
| 119 | 1.10.5.1 | Bug interne - Pas de calcul automatique après insertion des valeurs dans les variables formule - Frontend | 0.38d? | 2021-10-26 09:30 | 2021-10-26 12:30 |  |  | 108.88d | start no earlier than 2021-10-26 02:00 | Début 3 septembre | Benoit Gallou | 3h |  |
| 120 | 1.10.5.2 | Bug interne – Liste déroulante des exports automatiques | 0.5d? | 2021-11-04 09:30 | 2021-11-04 15:00 |  |  | 102.62d | start no earlier than 2021-11-04 09:00 | Début 3 septembre | Benoit Gallou | 4h |  |
| 121 | 1.10.5.3 | Bug interne - Frontend - Intégrer une colonne Site dans le suivi des imports | 0.88d? | 2021-10-14 09:30 | 2021-10-14 18:00 |  |  | 115.38d | start no earlier than 2021-10-14 09:00 | Début 3 septembre | Benoit Gallou | 7h |  |
| 122 | 1.10.5.4 | Bug interne - Intégrer une colonne Site dans le suivi des imports | 2.62d? | 2021-10-13 09:30 | 2021-10-15 18:00 |  |  | 114.5d | start no earlier than 2021-10-13 09:00 |  | Bilal Hafersas | 21h |  |
| 123 | 1.10.5.5 | Bug interne - Pas de calcul automatique après insertion des valeurs dans les variables formule - Backend | 0.88d? | 2021-10-18 09:30 | 2021-10-18 18:00 |  |  | 113.62d | start no earlier than 2021-10-18 09:00 | Début 3 septembre | Lamine Benfradj | 7h |  |
| 124 | 1.10.5.6 | Bug interne - Absence de remontée des alarmes liés à la génération des rapports | 0.5d? | 2021-10-20 09:30 | 2021-10-20 15:00 |  |  | 112.25d | start no earlier than 2021-10-20 09:00 |  | Florin Samson | 4h |  |
| 125 | 1.10.5.7 | Bug interne -bug de génération des rapports au PDF en cas de plusieurs onglets | 0.5d? | 2021-10-22 09:30 | 2021-10-22 15:00 |  |  | 110.5d | start no earlier than 2021-10-22 09:00 | Début 3 septembre | Florin Samson | 4h |  |
| 126 | 1.10.5.8 | Bug interne – Navigation entre les groupes de formulaires | 0.38d? | 2021-11-05 09:30 | 2021-11-05 12:30 |  |  | 101.88d | start no earlier than 2021-11-05 09:00 | Début 3 septembre | Benoit Gallou | 3h |  |
| 127 | 1.10.5.9 | Bug interne - Visibilité des imports LIMS limitée par site | 6.12d? | 2021-10-20 09:30 | 2021-11-03 18:00 |  |  | 103.12d | start no earlier than 2021-10-20 09:00 | Début 3 septembre | Bilal Hafersas | 49h |  |
| 128 | 1.10.5.10 | Bug interne LIMS - L’import LIMS ne s’effectue pas quand on paramètre plus d’un demandeur | 1.31d? | 2021-10-01 09:30 | 2021-10-06 14:30 |  |  | 121.06d | start no earlier than 2021-10-01 09:00 | Début 3 septembre | Bilal Hafersas | 10.5h |  |
| 129 | 1.10.5.11 | Bug interne - Référentiel => Toutes les Variables : Erreur interne si le filtre type variable est activé | 0.38d? | 2021-10-07 09:30 | 2021-10-07 12:30 |  |  | 120.25d | start no earlier than 2021-10-07 09:00 | Début 3 septembre | Lamine Benfradj | 3h |  |
| 130 | 1.10.5.12 | Bug interne - Impossibilité d'ajouter plus d'un code événement à un bilan sandre - BackEnd | 0.88d? | 2021-10-07 09:30 | 2021-10-07 18:00 |  |  | 119.75d | start no earlier than 2021-10-07 09:00 | Début 3 septembre | Florin Samson [57.1%] | 4h |  |
| 131 | 1.10.5.13 | Bug interne - Impossibilité d'ajouter plus d'un code événement à un bilan sandre - FrontEnd | 0.75d? | 2021-10-08 09:30 | 2021-10-08 17:00 |  |  | 119d | start no earlier than 2021-10-08 09:00 | Début 3 septembre | Benoit Gallou [50%] | 3h |  |
| 132 | 1.10.5.14 | Bug interne LIMS - Les erreurs Lims ne sont pas remontées | 1.25d | 2021-10-01 09:00 A | 2021-10-04 12:30 |  | 1.25d | 122.88d | finish no earlier than 2021-10-04 18:00 |  | Lamine Benfradj | 10h |  |
| 133 | 1.10.5.15 | Bug interne - Ajouts manuels : erreur interne lorsqu'on sélectionne un point de mesure | 0.88d | 2021-10-07 09:30 A | 2021-10-07 18:00 A | 100% |  |  | start no earlier than 2021-10-07 09:00 | Début 3 septembre | Bilal Hafersas | 4h | 4h |
| 134 | 1.10.5.16 | Bug interne - Impossibilité d'ajouter une variable à un dossier | 32.34h | 2021-09-23 09:00 A | 2021-09-29 15:20 | 5% | 30.84h | 125.33d | start no earlier than 2021-09-23 09:00 | Début 3 septembre | Sylvain Cailleau | 3.5h | 0.53h |
| 135 | 1.10.5.17 | Bug interne - Configuration d'alarme sur variable, données excessives KO | 0.88d? | 2021-10-04 14:00 A | 2021-10-06 15:00 A | 100% |  |  | start no earlier than 2021-10-04 13:00 |  | Lamine Benfradj | 7h | 7h |
| 136 | 1.11 | **Version 1.9.0 - 1.9.f** | 60.38d? | 2021-09-03 09:30 A | 2021-12-08 18:00 | 7% | 56.15d? | 81.25d |  | Début 3 septembre |  | 886h | 63h |
| 137 | 1.11.1 | **Gestion des environnents** | 0.38d? | 2021-11-15 09:30 | 2021-11-15 12:30 |  |  | 96.62d |  | Début 3 septembre |  | 3h |  |
| 138 | 1.11.1.1 | Préparation déploiement de la 1.9.0 | 0.38d? | 2021-11-15 09:30 | 2021-11-15 12:30 |  |  | 96.62d | start no earlier than 2021-11-15 09:00 | Début 3 septembre | Sylvain Cailleau | 3h |  |

| ID | WBS | Task | Duration | Start | Finish | Predecessors | Total slack | Free slack | Constraint | Calendar | Resources | Work |
| --- | --- | --- | --- | --- | --- | --- | --- | --- | --- | --- | --- | --- |
| 139 | 1.11.2 | **Gestion des données SICK sur l’usine SEC** | 39d? | 2021-09-22 09:30 | 2021-11-23 15:00 |  | 91.25d |  |  |  |  | 444h |
| 140 | 1.11.2.1 | SEC01 - Données 10 min - BackEnd | 1.38d? | 2021-09-24 09:30 | 2021-11-18 18:00 |  | 93.5d |  | start no earlier than 2021-09-24 09:00 | Début 3 septembre | Florin Samson | 11h |
| 141 | 1.11.2.2 | SEC01 - Données 10 min au sein des formulaires - FrontEnd | 0.44d | 2021-10-05 09:30 | 2021-10-05 14:30 |  | 121.94d |  | start no earlier than 2021-10-05 09:00 |  | Dorian Dauphin | 3.5h |
| 142 | 1.11.2.3 | SEC01 - Données 10 min sans les formulaires - FrontEnd | 2.19d? | 2021-09-27 09:30 | 2021-09-30 14:30 |  | 124.56d |  | start no earlier than 2021-09-27 09:00 |  | Benoit Gallou | 17.5h |
| 143 | 1.11.2.4 | SEC03 - Gestion des variables de type "durée" - FrontEnd | 0.88d? | 2021-11-05 09:30 | 2021-11-05 18:00 |  | 101.38d |  | start no earlier than 2021-11-05 09:00 | Début 3 septembre | Benoit Gallou [57.1%] | 4h |
| 144 | 1.11.2.5 | SEC02 - Données 30 min au sein des formulaires - FrontEnd | 0.44d | 2021-10-05 09:30 | 2021-10-05 14:30 |  | 121.94d |  | start no earlier than 2021-10-05 09:00 |  | Dorian Dauphin | 3.5h |
| 145 | 1.11.2.6 | SEC02 - Données 30 min - BackEnd | 1.75d | 2021-10-04 14:00 | 2021-10-07 12:30 |  | 120.25d |  | start no earlier than 2021-10-04 13:00 |  | Florin Samson | 14h |
| 146 | 1.11.2.7 | SEC02 - Données 30 min sans les formulaires - FrontEnd | 2.19d? | 2021-09-30 14:30 | 2021-10-06 18:00 |  | 120.62d |  | start no earlier than 2021-09-30 14:30 | Début 3 septembre | Benoit Gallou | 17.5h |
| 147 | 1.11.2.8 | SEC05 - Implémentation de l'import mensuel - Reprise Lamine | 3.5d? | 2021-11-08 15:00 | 2021-11-16 18:00 | 148 | 95.25d |  | start no earlier than 2021-11-08 09:00 | Début 3 septembre | Lamine Benfradj | 28h |
| 148 | 1.11.2.9 | SEC04 -Implémentation de l'import quotidien - Reprise Lamine | 2.25d? | 2021-11-03 09:30 | 2021-11-08 15:00 |  | 95.25d | 0d | start no earlier than 2021-11-03 09:00 | Début 3 septembre | Lamine Benfradj | 18h |
| 149 | 1.11.2.10 | SEC03 - Création des variables fumées + évolution du paramétrage - FrontEnd | 3.5h | 2021-10-05 14:30 | 2021-10-05 18:00 | 151 | 121.5d |  | start no earlier than 2021-09-28 09:00 | Début 3 septembre | Samir Haoual | 3.5h |
| 150 | 1.11.2.11 | SEC09 - Nouvel écran d'édition/validation : gestion des statuts supplémentaires | 1.75d? | 2021-11-10 09:30 | 2021-11-11 18:00 |  | 97.88d |  | start no earlier than 2021-11-10 09:00 | Début 3 septembre | Florin Samson | 14h |
| 151 | 1.11.2.12 | SEC03 - Création des variables fumées + évolution du paramétrage - BackEnd | 4.81d | 2021-09-28 09:30 | 2021-10-05 14:30 |  | 109.25d | 0d | start no earlier than 2021-09-28 09:00 |  | Samir Haoual | 38.5h |
| 152 | 1.11.2.13 | SEC04 - Implémentation de l'import quotidien - Backend | 7.88d | 2021-10-05 14:30 | 2021-10-18 18:00 | 151 | 109.25d | 0d |  |  | Samir Haoual | 63h |
| 153 | 1.11.2.14 | SEC08 - Visualisation des données fumées Nouvel écran d'édition/validation - Backend | 4.38d? | 2021-10-28 09:30 | 2021-11-08 18:00 |  | 100.5d |  | start no earlier than 2021-10-28 09:00 | Début 3 septembre | Florin Samson | 35h |
| 154 | 1.11.2.15 | SEC10 - Nouvel écran d'édition/validation : associations mesures et valeurs moyennes - Backend | 1.75d? | 2021-10-25 09:30 | 2021-11-09 18:00 |  | 99.62d |  | start no earlier than 2021-10-25 09:00 | Début 3 septembre | Florin Samson | 14h |
| 155 | 1.11.2.16 | SEC10 - Nouvel écran d'édition/validation : associations mesures et valeurs moyennes - FrontEnd | 4.38d | 2021-10-11 09:30 | 2021-11-04 12:30 |  | 102.75d |  | start no earlier than 2021-10-11 05:00 |  | Benoit Gallou | 35h |
| 156 | 1.11.2.17 | SEC05 - Implémentation de l'import mensuel - Backend | 4.38d | 2021-10-19 09:30 | 2021-10-25 18:00 | 152 | 109.25d |  |  |  | Samir Haoual | 35h |
| 157 | 1.11.2.18 | SEC06 - Création d'un nouveau menu + écran de dossiers de variables fumées - Frontend | 3d? | 2021-09-22 09:30 | 2021-10-05 12:30 |  | 122d |  | start no earlier than 2021-09-22 09:00 |  | Benoit Gallou | 24h |
| 158 | 1.11.2.19 | SEC06 - Création d'un nouveau menu + écran de dossiers de variables fumées - Backend | 2.88d? | 2021-09-27 15:00 | 2021-10-22 12:30 | 88 | 110.62d |  | start no earlier than 2021-09-27 09:00 | Début 3 septembre | Florin Samson | 23h |
| 159 | 1.11.2.20 | SEC07 - Création des dossiers de variables fumées | 0.88d? | 2021-10-27 09:30 | 2021-10-27 18:00 |  | 107.5d |  | start no earlier than 2021-10-27 09:00 | Début 3 septembre | Florin Samson | 7h |
| 160 | 1.11.2.21 | SEC03 - Aide Florin à Samir | 1.25d? | 2021-10-08 15:00 | 2021-10-11 18:00 |  | 118d |  | start no earlier than 2021-10-08 15:00 |  | Florin Samson | 14h |
| 161 | 1.11.2.22 | SAV36 - Reprise historique - Bilan Sandre | 2.62d? | 2021-11-18 09:30 | 2021-11-23 15:00 |  | 91.25d |  | start no earlier than 2021-11-18 09:00 | Début 3 septembre | Florin Samson | 21h |
| 162 | 1.11.3 | **Support** | 30.25d? | 2021-09-03 09:30 | 2021-10-21 15:00 |  | 111.38d |  |  | Début 3 septembre |  | 22h |
| 163 | 1.11.3.1 | Ticket 1953 – Recherche par nom des imports SFTP et LIMS KO - Frontend | 0.5d? | 2021-09-03 09:30 | 2021-09-03 15:00 |  | 141.12d |  |  | Début 3 septembre | Benoit Gallou | 4h |
| 164 | 1.11.3.2 | Ticket 1778 - A l'ouverture d'une fiche variable en édition, arrivée sur une page intermédiaire | 0.88d? | 2021-10-13 09:30 | 2021-10-13 18:00 |  | 116.25d |  | start no earlier than 2021-10-13 09:00 | Début 3 septembre | Benoit Gallou | 7h |
| 165 | 1.11.3.3 | Bug interne - Ajustements applicatifs nécessaires à la gestion des bilans SAV | 1.38d? | 2021-10-20 09:30 | 2021-10-21 15:00 |  | 111.38d |  | start no earlier than 2021-10-20 09:00 | Début 3 septembre | Sylvain Cailleau | 11h |

| ID | WBS | Task | Duration | Start | Finish | Complete | Remaining | Total slack | Free slack | Constraint | Deadline | Calendar | Resources | Work | Actual work | RAF le 23/02/2022 |
| --- | --- | --- | --- | --- | --- | --- | --- | --- | --- | --- | --- | --- | --- | --- | --- | --- |
| 166 | 1.11.4 | **Phase d'intégration SAV** | 60.38d? | 2021-09-03 09:30 A | 2021-12-08 18:00 | 15% | 51.51d? | 81.25d |  |  |  |  |  | 417h | 63h |  |
| 167 | 1.11.4.1 | Atelier SAV n°3 | 3h | 2021-09-23 09:00 A | 2021-09-23 12:30 A | 100% |  |  |  | start no earlier than 2021-09-23 09:00 |  | Début 3 septembre | Sylvain Cailleau | 3.5h | 3.5h |  |
| 168 | 1.11.4.2 | Atelier SAV n°5 | 0.88d? | 2021-11-09 09:30 | 2021-11-09 18:00 |  |  | 99.62d |  | start no earlier than 2021-11-09 09:00 |  | Début 3 septembre | Sylvain Cailleau [28.6%] | 2h |  |  |
| 169 | 1.11.4.3 | Atelier SAV n°4 | 3.5h | 2021-09-27 09:00 A | 2021-09-27 14:30 A | 100% |  |  |  | start no earlier than 2021-09-27 09:00 | 2021-09-27 18:00 | Début 3 septembre | Sylvain Cailleau | 3.5h | 3.5h |  |
| 170 | 1.11.4.4 | SAV04 - Variables de type quart d'heure - FrontEnd | 0.88d? | 2021-10-07 09:30 | 2021-10-08 15:00 |  |  | 119.25d |  | start no earlier than 2021-10-07 09:00 |  | Début 3 septembre | Benoit Gallou | 7h |  |  |
| 171 | 1.11.4.5 | SAV05-Variables de type minute - Backend | 3d? | 2021-09-22 15:00 | 2021-10-28 18:00 |  |  | 106.62d |  | start no earlier than 2021-09-22 15:00 |  | Début 3 septembre | Sylvain Cailleau | 24h |  |  |
| 172 | 1.11.4.6 | SAV05-Variables de type minute - Frontend | 4d | 2021-09-03 09:30 | 2021-10-21 18:00 |  |  | 111d |  |  |  |  | Benoit Gallou | 32h |  |  |
| 173 | 1.11.4.7 | SAV19 - Formulaires personnalisables / Possibilité de figer les tailles des colonnes ou des lignes | 4.38d | 2021-09-24 09:30 | 2021-09-30 18:00 |  |  | 124.12d |  | start no earlier than 2021-09-24 09:00 |  |  | Dorian Dauphin | 35h |  |  |
| 174 | 1.11.4.8 | SAV10 - Ajout de fonctions de calcul - UX/UI | 2.62d | 2021-09-23 09:30 | 2021-09-27 18:00 |  |  | 126.75d |  | start no earlier than 2021-09-23 09:00 |  | Début 3 septembre | Alpha Bah | 21h |  |  |
| 175 | 1.11.4.9 | SAV11 - Ajout de fonctions de calcul / Intégration des calculs dateheure - Backend | 4.12d? | 2021-10-04 09:30 | 2021-10-25 18:00 |  |  | 109.25d |  | start no earlier than 2021-10-04 09:00 |  | Début 3 septembre | Lamine Benfradj | 33h |  |  |
| 176 | 1.11.4.10 | SAV29 - Import de la cartographie des variables dans Aquedi | 0.5d | 2021-09-29 09:30 | 2021-09-29 15:00 |  |  | 125.38d |  | start no earlier than 2021-09-29 09:00 |  | Début 3 septembre | Sylvain Cailleau | 4h |  |  |
| 177 | 1.11.4.11 | SAV27 - Duplication des variables multi-période | 0.88d? | 2021-09-28 09:30 | 2021-09-29 12:30 |  |  | 125.5d |  | start no earlier than 2021-09-28 09:00 |  | Début 3 septembre | Sylvain Cailleau | 7h |  |  |
| 178 | 1.11.4.12 | Nouvelle gestion des périodes d’agrégation | 4.38d? | 2021-10-29 09:30 | 2021-11-19 18:00 |  |  | 92.62d |  | start no earlier than 2021-10-29 09:00 |  | Début 3 septembre | Sylvain Cailleau | 35h |  |  |
| 179 | 1.11.4.13 | SAV36 - Reprise historique - Bilan Sandre | 0.88d? | 2021-09-03 09:30 | 2021-09-03 18:00 |  |  | 140.75d |  |  |  | Début 3 septembre | Florin Samson | 7h |  |  |
| 180 | 1.11.4.14 | SAV25 - Import des saisies manuelles et des données laboratoire | 12.12d | 2021-09-30 09:30 | 2021-12-08 14:30 |  |  | 81.69d |  | start no earlier than 2021-09-30 09:00 |  | Début 3 septembre | Florin Samson | 97h |  |  |
| 181 | 1.11.4.15 | SAV31 -Sylvain - Implémentation des variables calculées suite à l’ajout des fonctions de Basta | 3.12d? | 2021-11-24 09:30 | 2021-12-08 15:00 |  |  | 81.62d |  | start no earlier than 2021-11-24 09:00 |  | Début 3 septembre | Sylvain Cailleau | 21h |  |  |
| 182 | 1.11.4.16 | SAV31 - Lamine - Implémentation des variables calculées suite à l’ajout des fonctions de Basta | 3.62d? | 2021-10-29 09:30 | 2021-11-19 18:00 |  |  | 92.62d |  | start no earlier than 2021-10-29 09:00 |  | Début 3 septembre | Lamine Benfradj | 29h |  |  |
| 183 | 1.11.4.17 | SAV10 - Ajout de fonctions de calcul - Frontend | 7d | 2021-10-05 13:00 A | 2021-12-08 18:00 A | 100% |  |  |  | finish no earlier than 2021-10-07 18:00 |  | Début 3 septembre | Benoit Gallou | 56h | 56h |  |
| 184 | 1.12 | **Version 1.9.1** | 85.25d? | 2021-10-15 09:30 | 2022-03-01 12:30 |  |  | 30.12d |  |  |  | Début 3 septembre |  | 759h |  |  |
| 185 | 1.12.1 | Déploiement / intégration 1.9.1 | 1.25d? | 2022-02-07 09:30 | 2022-02-08 12:30 |  |  | 41d | 0d | start no earlier than 2022-02-07 09:00 |  | Début 3 septembre | Sylvain Cailleau | 10h |  | 1.5 |
| 186 | 1.12.2 | **Phase d'intégration SAV** | 59.5d? | 2021-11-22 09:30 | 2022-02-23 18:00 |  |  | 33.12d |  |  |  | Début 3 septembre |  | 474h |  |  |
| 187 | 1.12.2.1 | SAV12 - Frontend - Précisions des calculs / Gestion des niveaux d’arrondis au sein de l'application web | 0.88d? | 2021-12-29 09:30 | 2021-12-29 18:00 |  |  | 68.12d |  | start no earlier than 2021-12-29 09:00 |  | Début 3 septembre | Benoit Gallou | 7h |  |  |
| 188 | 1.12.2.2 | SAV12 - Backend - Précisions des calculs / Gestion des niveaux d’arrondis au sein de l'application web | 10.62d? | 2021-12-07 09:30 | 2022-01-25 18:00 |  |  | 51.5d |  | start no earlier than 2021-12-07 08:00 |  | Début 3 septembre | Lamine Benfradj | 85h |  |  |
| 189 | 1.12.2.3 | SAV13 - Précisions des calculs / Gestion des niveaux d’arrondis au sein des bilans | 8.38d? | 2021-12-31 09:30 | 2022-01-27 18:00 |  |  | 49.75d |  | start no earlier than 2021-12-31 03:00 |  | Début 3 septembre | Lamine Benfradj | 67h |  |  |
| 190 | 1.12.2.4 | SAV13 - Tests - Précisions des calculs / Gestion des niveaux d’arrondis au sein des bilans | 0.88d? | 2022-01-28 09:30 | 2022-01-28 18:00 |  |  | 48.88d |  | start no earlier than 2022-01-28 09:00 |  | Début 3 septembre | Benoit Gallou | 7h |  |  |
| 191 | 1.12.2.5 | SAV12 - Tests - Précisions des calculs / Gestion des niveaux d’arrondis au sein de l'application web | 0.88d? | 2022-01-27 09:30 | 2022-01-27 18:00 |  |  | 49.75d |  | start no earlier than 2022-01-27 09:00 |  | Début 3 septembre | Benoit Gallou | 7h |  |  |
| 192 | 1.12.2.6 | SAV15 - Tests - Correction des mesures erronées - Lamine | 0.88d? | 2022-02-14 09:30 | 2022-02-14 18:00 |  |  | 39.25d |  | start no earlier than 2022-02-14 09:00 |  | Début 3 septembre | Lamine Benfradj [42.9%] | 3h |  |  |
| 193 | 1.12.2.7 | SAV15 - Tests - Correction des mesures erronées - Benoit | 0.88d? | 2022-02-03 09:30 | 2022-02-03 18:00 |  |  | 45.38d |  | start no earlier than 2022-02-03 08:00 |  | Début 3 septembre | Benoit Gallou | 7h |  | 0.5 |
| 194 | 1.12.2.8 | SAV15 - Frontend - Correction des mesures erronées | 2.62d? | 2022-01-26 09:30 | 2022-02-01 18:00 |  |  | 47.12d |  | start no earlier than 2022-01-26 09:00 |  | Début 3 septembre | Benoit Gallou | 21h |  |  |
| 195 | 1.12.2.9 | SAV15 - Backend - Correction des mesures erronées | 4d? | 2022-01-28 09:30 | 2022-02-03 15:00 |  |  | 45.75d |  | start no earlier than 2022-01-28 08:00 |  | Début 3 septembre | Lamine Benfradj | 32h |  |  |
| 196 | 1.12.2.10 | SAV20 - Gestion des données invalides | 5.62d? | 2022-01-05 09:30 | 2022-02-21 18:00 |  |  | 34.88d |  | start no earlier than 2022-01-05 09:00 |  | Début 3 septembre | Florin Samson | 45h |  |  |
| 197 | 1.12.2.11 | SAV23 - Modélisation des bilans Sandre [Chgt Sélection] - Florin | 6.5d? | 2022-01-10 09:30 | 2022-02-02 12:30 |  |  | 46.75d |  | start no earlier than 2022-01-10 09:00 |  | Début 3 septembre | Florin Samson | 52h |  |  |
| 198 | 1.12.2.12 | SAV23 - Modélisation des bilans Sandre [Chgt Sélection] - Sylvain | 3.5d? | 2022-01-06 09:30 | 2022-01-11 18:00 |  |  | 60.25d |  | start no earlier than 2022-01-06 07:00 |  | Début 3 septembre | Sylvain Cailleau | 28h |  |  |
| 199 | 1.12.2.13 | SAV36 - 1.9.1 - Reprise de dumps et migration de données de Basta à Aquedi | 2.62d? | 2022-01-31 09:30 | 2022-02-02 18:00 |  |  | 46.25d |  | start no earlier than 2022-01-31 06:00 |  | Début 3 septembre | Sylvain Cailleau | 21h |  |  |
| 200 | 1.12.2.14 | SAV07 - Impact des nouveaux types de variables sur les imports / Optimisation du code | 10.25d? | 2022-01-18 09:30 | 2022-02-23 18:00 |  |  | 33.12d |  | start no earlier than 2022-01-18 05:00 |  | Début 3 septembre | Sylvain Cailleau | 82h |  | 4.5 |
| 201 | 1.12.2.15 | SAV30 - Validation paramétrage et tests des imports / Imports binaires et SFTP | 1.25d? | 2021-11-22 09:30 | 2021-12-31 18:00 |  |  | 66.38d |  | start no earlier than 2021-11-22 09:00 |  | Début 3 septembre | Sylvain Cailleau | 10h |  |  |

| ID | WBS | Task | Duration | Start | Finish | Predecessors | Total slack | Free slack | Constraint | Calendar | Resources | Work | RAF le 23/02/2022 |
| --- | --- | --- | --- | --- | --- | --- | --- | --- | --- | --- | --- | --- | --- |
| 202 | 1.12.3 | **Support** | 85.25d? | 2021-10-15 09:30 | 2022-03-01 12:30 |  | 30.12d |  |  | Début 3 septembre |  | 275h |  |
| 203 | 1.12.3.1 | Ticket 2372 - Reprise de données : Variable heure calculée fausse | 0.88d? | 2022-02-28 14:00 | 2022-03-01 12:30 | 53 | 29.25d | 0d | start no earlier than 2022-02-28 09:00 | Début 3 septembre | Sylvain Cailleau | 7h |  |
| 204 | 1.12.3.2 | Ticket 1921 – Données inférieures à la Lq non prises en compte lors d'un import LIMS | 4.75d? | 2021-12-02 09:30 | 2022-02-04 18:00 |  | 44.5d |  | start no earlier than 2021-12-02 06:00 | Début 3 septembre | Lamine Benfradj | 38h | 1.5 |
| 205 | 1.12.3.3 | Ticket 2221 - Edition/validation - Copier coller des valeurs textes KO | 1.75d? | 2022-01-21 09:30 | 2022-01-24 18:00 |  | 52.38d |  | start no earlier than 2022-01-21 09:00 | Début 3 septembre | Benoit Gallou | 14h |  |
| 206 | 1.12.3.4 | Ticket 2086 – Implémentation d’une formule de type moyenne sans zéros | 1.75d? | 2022-02-02 09:30 | 2022-02-03 18:00 |  | 20.5d | 0d | start no earlier than 2022-02-02 06:00 | Début 3 septembre | Bilal Hafersas | 14h |  |
| 207 | 1.12.3.5 | Ticket 2082 - Edition des données : export ne prenant pas en compte les dates sans valeur | 0.88d? | 2022-01-12 09:30 | 2022-01-12 18:00 |  | 59.38d |  | start no earlier than 2022-01-12 09:00 | Début 3 septembre | Bilal Hafersas | 7h |  |
| 208 | 1.12.3.6 | Ticket 2073 - Edition des données : export Excel et PDF des valeurs texte avec balises | 0.38d? | 2022-01-14 09:30 | 2022-01-14 12:30 |  | 58.12d |  | start no earlier than 2022-01-14 09:00 | Début 3 septembre | Sylvain Cailleau | 3h |  |
| 209 | 1.12.3.7 | Ticket 2097 - Edition des données : exports Excel et PDF des valeurs quart d'heure de 00:00 à 23:45 au lieu de 07:15 à 07:00 | 0.88d? | 2022-01-03 09:30 | 2022-01-03 18:00 |  | 65.5d |  | start no earlier than 2022-01-03 09:00 | Début 3 septembre | Sylvain Cailleau | 7h |  |
| 210 | 1.12.3.8 | Ticket 2028 - Optimisation du module des formulaires 1.8.6 | 3.5d? | 2022-01-18 09:30 | 2022-01-21 18:00 |  | 53.25d |  | start no earlier than 2022-01-18 09:00 | Début 3 septembre | Dorian Dauphin | 28h |  |
| 211 | 1.12.3.9 | Ticket 2088 - Reprise de données BaSta : valeurs absentes pour les variables J4BMNBM02_Q et J4BMNBM01_Q | 0.88d? | 2021-12-30 09:30 | 2021-12-30 18:00 |  | 67.25d |  | start no earlier than 2021-12-30 09:00 | Début 3 septembre | Sylvain Cailleau | 7h |  |
| 212 | 1.12.3.10 | Ticket 2078 - Problème de génération de Bilan | 0.88d? | 2021-12-28 09:30 | 2021-12-28 18:00 |  | 69d |  | start no earlier than 2021-12-28 09:00 | Début 3 septembre | Sylvain Cailleau | 7h |  |
| 213 | 1.12.3.11 | Ticket 2072 - Edition des données : valeur texte non visible complètement | 0.88d? | 2022-01-03 09:30 | 2022-01-03 18:00 |  | 65.5d |  | start no earlier than 2022-01-03 09:00 | Début 3 septembre | Benoit Gallou | 7h |  |
| 214 | 1.12.3.12 | Ticket 2044 - Backend - Formulaires Lot A BaSta : absents, incomplet et sans affichage des données | 0.88d? | 2021-12-29 09:30 | 2021-12-29 18:00 |  | 68.12d |  | start no earlier than 2021-12-29 09:00 | Début 3 septembre | Sylvain Cailleau | 7h |  |
| 215 | 1.12.3.13 | Ticket 2098 - Edition des données : export PDF des valeurs quart d'heure et minute sans précision de l'heure | 0.88d? | 2022-01-04 09:30 | 2022-01-04 18:00 |  | 64.62d |  | start no earlier than 2022-01-04 09:00 | Début 3 septembre | Sylvain Cailleau | 7h |  |
| 216 | 1.12.3.14 | Ticket 1962 - Impossibilité de supprimer une valeur alors que le bouton l'autorise | 0.88d? | 2022-01-25 09:30 | 2022-01-25 18:00 |  | 51.5d |  | start no earlier than 2022-01-25 09:00 | Début 3 septembre | Benoit Gallou | 7h |  |
| 217 | 1.12.3.15 | Ticket 2068 - Reprise de données BaSta : valeurs des variables Date incorrectes | 0.88d? | 2022-02-04 09:30 | 2022-02-04 18:00 |  | 44.5d |  | start no earlier than 2022-02-04 06:00 | Début 3 septembre | Benoit Gallou [42.9%] | 3h |  |
| 218 | 1.12.3.16 | Ticket 2086 - Frontend - Nouvelle formule de calcul : moyenne sans zéros | 2.25d? | 2022-02-04 14:00 | 2022-02-09 18:00 |  | 41.88d |  | start no earlier than 2022-02-04 13:00 | Début 3 septembre | Benoit Gallou | 18h | 0.5 |
| 219 | 1.12.3.17 | Ticket 1958 - Validation des données via les formulaires - Réduction de la plage de date par défaut | 0.88d? | 2021-11-09 09:30 | 2021-11-09 18:00 |  | 99.62d |  | start no earlier than 2021-11-09 09:00 | Début 3 septembre | Benoit Gallou | 7h |  |
| 220 | 1.12.3.18 | Ticket 2043 - Reprise de données BaSta : valeur ayant un statut Invalide alors qu'elle a été modifiée dans BaSta | 0.88d? | 2022-01-12 09:30 | 2022-01-12 18:00 |  | 59.38d |  | start no earlier than 2022-01-12 09:00 | Début 3 septembre | Sylvain Cailleau | 7h |  |
| 221 | 1.12.3.19 | Bug interne – Problème de performances+bugs à l’édition des données fumées | 1.75d? | 2021-11-22 09:30 | 2021-11-23 18:00 |  | 90.88d |  | start no earlier than 2021-11-22 05:00 | Début 3 septembre | Lamine Benfradj | 14h |  |
| 222 | 1.12.3.20 | Ticket interne 2192 - Correctifs données fumées post 1.9.0.2 Bug C- Génération de bilans avec variables de type durée KO | 0.88d? | 2022-01-19 09:30 | 2022-01-19 18:00 |  | 55d |  | start no earlier than 2022-01-19 09:00 | Début 3 septembre | Lamine Benfradj [42.9%] | 3h |  |
| 223 | 1.12.3.21 | Ticket 2333 - Connection impossible au service LIMS | 2.12d? | 2022-01-25 09:30 | 2022-02-03 12:30 |  | 45.88d |  | start no earlier than 2022-01-25 09:00 | Début 3 septembre | Sylvain Cailleau | 17h |  |
| 224 | 1.12.3.22 | Ticket 2166 - Erreur lors de l'import d'un fichier binaire | 1.38d? | 2022-01-14 09:30 | 2022-01-17 18:00 |  | 56.75d |  | start no earlier than 2022-01-14 09:00 | Début 3 septembre | Sylvain Cailleau | 11h |  |
| 225 | 1.12.3.23 | Ticket 2093 - Bilan Lot 0A BaSta : valeurs Heures en partie fausses dans l'onglet Global_Cuves pour le bilan 1025-Mb_BM_Suivi global membranes | 0.88d? | 2022-01-13 09:30 | 2022-01-13 18:00 |  | 58.5d |  | start no earlier than 2022-01-13 09:00 | Début 3 septembre | Sylvain Cailleau | 7h |  |
| 226 | 1.12.3.24 | Incident 1605 – La reproduction de la valeur precedente ne fonctionne pas | 3.5d? | 2021-10-15 09:30 | 2021-12-01 18:00 |  | 85.62d |  | start no earlier than 2021-10-15 09:00 | Début 3 septembre | Lamine Benfradj | 28h |  |

| ID | WBS | Task | Duration | Start | Finish | Predecessors | Total slack | Free slack | Constraint | Calendar | Resources | Work |
| --- | --- | --- | --- | --- | --- | --- | --- | --- | --- | --- | --- | --- |
| 227 | 1.13 | **Version 1.9.2** | 135.62d? | 2021-09-03 09:30 | 2022-04-07 18:00 |  | 6d |  |  |  |  | 1090h |
| 228 | 1.13.1 | **Evolutions SAV** | 134.25d? | 2021-09-03 09:30 | 2022-04-06 12:30 |  | 7.38d |  |  | Début 3 septembre |  | 429h |
| 229 | 1.13.1.1 | SAV14 - Frontend - Variables calculées liée à une procédure stockée | 0.88d? | 2021-09-03 09:30 | 2021-09-03 18:00 |  | 140.75d |  |  | Début 3 septembre |  | 7h |
| 230 | 1.13.1.2 | SAV08 - Impact des nouveaux types de variables sur les imports / Optimisation de la base de donnée | 11.5d? | 2021-12-13 09:30 | 2022-02-25 18:00 |  | 31.38d |  | start no earlier than 2021-12-13 09:00 | Début 3 septembre | Florin Samson | 92h |
| 231 | 1.13.1.3 | SAV21 - Frontend - Menu arborescent | 14.12d? | 2022-03-02 09:30 | 2022-04-04 18:00 |  | 6.5d | 0d | start no earlier than 2022-03-02 09:00 | Début 3 septembre | Benoit Gallou | 113h |
| 232 | 1.13.1.4 | SAV14 - Backend - Variables calculées liée à une procédure stockée | 5.25d? | 2022-03-04 14:00 | 2022-04-06 12:30 |  | 7.38d |  | start no earlier than 2022-03-04 13:00 | Début 3 septembre | Sylvain Cailleau | 42h |
| 233 | 1.13.1.5 | SAV34 - Florin - Matrice des droits | 4.38d? | 2022-03-30 09:30 | 2022-04-05 18:00 | 234 | 7.75d |  | start no earlier than 2022-03-30 09:00 | Début 3 septembre | Florin Samson | 35h |
| 234 | 1.13.1.6 | SAV34 - Sylvain - Matrice des droits | 0.88d? | 2022-03-25 14:00 | 2022-03-28 12:30 | 50 | 9.12d | 1.38d | start no earlier than 2022-03-25 13:00 |  | Sylvain Cailleau | 7h |
| 235 | 1.13.1.7 | SAV21 - Backend - Menu arborescent | 16.62d? | 2022-02-07 09:30 | 2022-03-24 12:30 |  | 12.12d | 0d | start no earlier than 2022-02-07 09:00 | Début 3 septembre | Lamine Benfradj | 133h |
| 236 | 1.13.2 | **Intégration SAV - Reprise du dump** | 3.12d? | 2022-03-31 09:30 | 2022-04-05 15:00 |  | 8.12d |  |  | Début 3 septembre |  | 25h |
| 237 | 1.13.2.1 | Reprise du paramétrage des variables de Basta | 0.38d? | 2022-03-31 09:30 | 2022-03-31 12:30 |  | 8.12d | 0d | start no earlier than 2022-03-31 08:00 | Début 3 septembre | Sylvain Cailleau | 3h |
| 238 | 1.13.2.2 | Extraction des données de variable et de leur statut de la base de données de BaSta | 0.5d? | 2022-03-31 14:00 | 2022-03-31 18:00 | 237 | 8.12d | 0d |  | Début 3 septembre | Sylvain Cailleau | 4h |
| 239 | 1.13.2.3 | Vérification des injections des données | 0.88d? | 2022-04-01 09:30 | 2022-04-01 18:00 | 238 | 8.12d | 0d | start no earlier than 2022-04-01 09:00 | Début 3 septembre | Sylvain Cailleau | 7h |
| 240 | 1.13.2.4 | Vérification du bon déroulement des imports SFTP standard, binaires, de saisies manuelles | 1.38d? | 2022-04-04 09:30 | 2022-04-05 15:00 | 239 | 8.12d |  |  | Début 3 septembre | Sylvain Cailleau | 11h |
| 241 | 1.13.3 | **Support** | 64.75d? | 2021-12-27 09:30 | 2022-04-07 18:00 |  | 6d |  |  | Début 3 septembre |  | 437h |
| 242 | 1.13.3.1 | Ticket 2230 - Lamine - Impossible de dupliquer une variables LIMS | 0.88d? | 2022-02-17 09:30 | 2022-02-17 18:00 |  | 36.62d |  | start no earlier than 2022-02-17 09:00 | Début 3 septembre | Lamine Benfradj | 7h |
| 243 | 1.13.3.2 | Ticket 2230 - Benoit - Impossible de dupliquer une variables LIMS | 0.38d? | 2022-03-30 09:30 | 2022-03-30 12:30 |  | 11.75d |  | start no earlier than 2022-03-30 09:00 | Début 3 septembre | Benoit Gallou | 3h |
| 244 | 1.13.3.3 | Ticket 2230 - Bilal - Impossible de dupliquer une variables LIMS | 2.25d? | 2022-03-24 09:30 | 2022-03-30 18:00 |  | 11.25d |  | start no earlier than 2022-03-24 09:00 | Début 3 septembre | Bilal Hafersas | 18h |
| 245 | 1.13.3.4 | Ticket 2165 - Import Supervision SAV : valeurs de la variable J4GDRDGTAG1 divisées par 100 dans Aquedi par rapport à BaSta pour le 10/12/2021 | 0.38d? | 2022-03-29 09:30 | 2022-03-29 12:30 |  | 12.62d |  | start no earlier than 2022-03-29 09:00 | Début 3 septembre | Sylvain Cailleau | 3h |
| 246 | 1.13.3.5 | Ticket 2656 - Passage à l'heure d'été : fichiers supervisions en erreur | 0.88d? | 2022-03-30 09:30 | 2022-03-30 18:00 |  | 11.25d |  | start no earlier than 2022-03-30 09:00 | Début 3 septembre | Sylvain Cailleau | 7h |
| 247 | 1.13.3.6 | Ticket 2164 - Supervision SAV : pour la variable J4OPCHG2, des valeurs sont affichées dans Aquedi pour le 10/12/2021 alors qu'il n'y en a pas dans BaSta | 0.5d? | 2022-03-29 09:30 | 2022-03-29 15:00 |  | 12.5d |  | start no earlier than 2022-03-29 09:00 | Début 3 septembre | Sylvain Cailleau | 4h |
| 248 | 1.13.3.7 | Ticket 2081 - Reprise de données BaSta : variables de Type "Liste déroulante" non déclarées dans Aquedi en tant que variable ayant une "Liste de valeurs" | 2.12d? | 2022-01-05 09:30 | 2022-02-14 18:00 |  | 39.25d |  | start no earlier than 2022-01-05 09:00 | Début 3 septembre | Sylvain Cailleau | 17h |
| 249 | 1.13.3.8 | Ticket 2227 - Problème avec le statut de la donnée _ préprod 1.9.0.3 | 0.88d? | 2022-02-22 09:30 | 2022-02-22 18:00 |  | 34d |  | start no earlier than 2022-02-22 09:00 | Début 3 septembre | Benoit Gallou | 7h |
| 250 | 1.13.3.9 | Ticket 2374 - Backend - INTERNE Hiérarchisation des droits utilisateurs | 1.75d? | 2022-02-16 09:30 | 2022-02-17 18:00 |  | 35.75d | 0d | start no earlier than 2022-02-16 09:00 | Début 3 septembre | Bilal Hafersas | 14h |
| 251 | 1.13.3.10 | Ticket 2219 - Liste des évènements : la purge ne fonctionne pas | 0.88d? | 2022-02-18 09:30 | 2022-02-18 18:00 | 250 | 35.75d |  | finish no earlier than 2022-02-18 18:00 | Début 3 septembre | Bilal Hafersas [42.9%] | 7h |
| 252 | 1.13.3.11 | Ticket 2100 - Alarmes | 1.38d? | 2022-02-23 09:30 | 2022-02-24 15:00 |  | 32.62d |  | start no earlier than 2022-02-23 09:00 | Début 3 septembre | Bilal Hafersas | 11h |
| 253 | 1.13.3.12 | Ticket 2508 - Frontend - INTERNE - LQ pas affiché dans l'historique lors d'une création de variable | 1.25d? | 2022-03-03 09:30 | 2022-03-04 12:30 |  | 27.5d |  | start no earlier than 2022-03-03 09:00 | Début 3 septembre | Alpha Bah | 10h |
| 254 | 1.13.3.13 | Ticket 2658 - INTERNE - Bug sur sur une formule de modélisation pour les bilans mensuels | 1.75d? | 2022-03-25 09:30 | 2022-03-28 18:00 |  | 13d |  | start no earlier than 2022-03-25 09:00 | Début 3 septembre | Florin Samson | 14h |
| 255 | 1.13.3.14 | Ticket 2589 - Florin - Bilans MAV impossibles à générer | 3.5d? | 2022-03-17 09:30 | 2022-03-24 18:00 |  | 14.75d |  | start no earlier than 2022-03-17 08:00 | Début 3 septembre | Florin Samson | 28h |
| 256 | 1.13.3.15 | Ticket 2508 - Backend - INTERNE - LQ pas affiché dans l'historique lors d'une création de variable | 1.25d? | 2022-02-28 09:30 | 2022-03-01 12:30 |  | 1.25d | 0d | start no earlier than 2022-02-28 06:00 | Début 3 septembre | Florin Samson | 10h |
| 257 | 1.13.3.16 | Ticket 2589 - Bilal - Bilans MAV impossibles à générer | 0.88d? | 2022-03-18 09:30 | 2022-03-18 18:00 |  | 18.25d |  | start no earlier than 2022-03-18 06:00 | Début 3 septembre | Bilal Hafersas | 7h |
| 258 | 1.13.3.17 | Ticket 2586 - Bilal - Import LIMS SEM et MAV KO | 0.88d? | 2022-03-17 09:30 | 2022-03-17 18:00 |  | 19.12d |  | start no earlier than 2022-03-17 09:00 | Début 3 septembre | Bilal Hafersas | 7h |
| 259 | 1.13.3.18 | Ticket 1890 - Bilal - Accès à tous les droits de tous les sites | 3.12d? | 2022-02-25 09:30 | 2022-03-16 18:00 |  | 20d |  | start no earlier than 2022-02-25 09:00 | Début 3 septembre | Bilal Hafersas | 25h |
| 260 | 1.13.3.19 | Ticket 2063 – Backend - Edition des données : toutes les valeurs ne sont pas visibles / Dette technique – Refonte de l’écran Edition/Validation | 5.62d? | 2022-01-13 09:30 | 2022-04-07 18:00 |  | 6d |  | start no earlier than 2022-01-13 09:00 | Début 3 septembre | Bilal Hafersas | 45h |
| 261 | 1.13.3.20 | Ticket 1890 - Lamine - Accès à tous les droits de tous les sites | 2.75d? | 2022-03-24 14:00 | 2022-03-29 18:00 | 235 | 12.12d |  | start no earlier than 2022-03-22 09:00 |  | Lamine Benfradj | 22h |
| 262 | 1.13.3.21 | Ticket 1823 - Large visualisation des données sur l'écran édition/validation | 2.12d? | 2022-04-05 09:30 | 2022-04-07 12:30 | 231 | 6.5d |  | start no earlier than 2021-09-03 09:00 | Début 3 septembre | Benoit Gallou | 17h |
| 263 | 1.13.3.22 | Ticket 2374 - FrontEnd - INTERNE Hiérarchisation des droits utilisateurs | 0.88d? | 2022-03-14 09:30 | 2022-03-14 18:00 |  | 21.75d |  | start no earlier than 2022-03-14 09:00 | Début 3 septembre | Benoit Gallou | 7h |
| 264 | 1.13.3.23 | Ticket 2063 – Frontend - Edition des données : toutes les valeurs ne sont pas visibles / Dette technique – Refonte de l’écran Edition/Validation | 18.38d? | 2021-12-27 09:30 | 2022-02-28 18:00 |  | 30.5d |  | start no earlier than 2021-12-27 09:00 | Début 3 septembre | Benoit Gallou | 147h |

| ID | WBS | Task | Duration | Start | Finish | Predecessors | Complete | Remaining | Total slack | Constraint | Calendar | Resources | Work | Actual work |
| --- | --- | --- | --- | --- | --- | --- | --- | --- | --- | --- | --- | --- | --- | --- |
| 265 | 1.13.4 | **Dette technique** | 37.62d? | 2022-02-04 09:30 | 2022-04-05 18:00 |  |  |  | 7.75d |  | Début 3 septembre |  | 132h |  |
| 266 | 1.13.4.1 | Ticket 2590 - INTERNE - Décorrélation entre les droits et la classification des documents | 8.75d? | 2022-03-09 09:30 | 2022-04-05 18:00 |  |  |  | 7.75d | start no earlier than 2022-03-09 09:00 | Début 3 septembre | Lamine Benfradj | 70h |  |
| 267 | 1.13.4.2 | Ticket interne 2193 - Frontend - Export automatique vers un espace de stockage partagé + import | 2.12d? | 2022-02-17 14:00 | 2022-03-11 12:30 |  |  |  | 23.12d | start no earlier than 2022-02-17 13:00 | Début 3 septembre | Benoit Gallou | 17h |  |
| 268 | 1.13.4.3 | Ticket interne 2193 - Backend - Export automatique vers un espace de stockage partagé + Import | 5.62d? | 2022-02-04 09:30 | 2022-03-16 12:30 | 206 |  |  | 20.5d | start no earlier than 2022-01-21 09:00 | Début 3 septembre | Bilal Hafersas | 45h |  |
| 269 | 1.13.5 | **Autres** | 31.62d? | 2022-02-08 14:00 | 2022-03-30 15:00 |  |  |  | 11.62d |  | Début 3 septembre |  | 67h |  |
| 270 | 1.13.5.1 | Aide présentation Ben sur les droits - Benoit | 0.5d? | 2022-03-30 09:30 | 2022-03-30 15:00 |  |  |  | 11.62d | start no earlier than 2022-03-30 09:00 | Début 3 septembre | Benoit Gallou | 4h |  |
| 271 | 1.13.5.2 | Présentation Stratégie Edouard Paletou | 0.38d? | 2022-03-28 09:30 | 2022-03-28 12:30 |  |  |  | 13.5d | start no earlier than 2022-03-28 09:00 | Début 3 septembre | Lamine Benfradj | 3h |  |
| 272 | 1.13.5.3 | Congé parental - Lamine | 2.62d? | 2022-02-21 09:30 | 2022-02-23 18:00 |  |  |  | 33.12d | start no earlier than 2022-02-21 09:00 | Début 3 septembre | Lamine Benfradj | 21h |  |
| 273 | 1.13.5.4 | Ticket 2640 - Problèmes lenteurs serveurs de test | 1.38d? | 2022-03-23 09:30 | 2022-03-28 15:00 |  |  |  | 13.38d | start no earlier than 2022-03-23 09:00 | Début 3 septembre | Sylvain Cailleau | 11h |  |
| 274 | 1.13.5.5 | Livraison MCD Aquedi | 1.25d? | 2022-03-08 15:00 | 2022-03-09 18:00 | 61 |  |  | 24.38d | start no earlier than 2022-03-08 09:00 | Début 3 septembre | Sylvain Cailleau | 10h |  |
| 275 | 1.13.5.6 | Management Equipe | 2.25d? | 2022-02-08 14:00 | 2022-02-10 18:00 | 185 |  |  | 41d | start no earlier than 2022-02-08 12:00 | Début 3 septembre | Sylvain Cailleau | 18h |  |
| 276 | 1.14 | **Version 1.9.0.1** | 49.88d? | 2021-09-30 09:30 A | 2021-12-17 18:00 |  | 2% | 48.89d? | 75.12d |  |  |  | 333.5h | 3h |
| 277 | 1.14.1 | **Déploiement SAV - Début marche en double** | 8.75d? | 2021-11-22 09:30 | 2021-12-03 18:00 |  |  |  | 83.88d |  | Début 3 septembre |  | 64h |  |
| 278 | 1.14.1.1 | Vérification des simulations | 0.88d? | 2021-11-29 09:30 | 2021-11-29 18:00 |  |  |  | 87.38d | start no earlier than 2021-11-29 09:00 | Début 3 septembre | Sylvain Cailleau | 7h |  |
| 279 | 1.14.1.2 | Simulation de l'Injection des données autre que les valeurs dans la base d’AQUEDI sur un environnement de tests de Studia | 0.88d? | 2021-11-25 09:30 | 2021-11-25 18:00 |  |  |  | 89.12d | start no earlier than 2021-11-25 09:00 |  | Sylvain Cailleau | 7h |  |
| 280 | 1.14.1.3 | Conversion des formules de calcul au format AQUEDI | 0.66d? | 2021-11-23 09:30 | 2021-11-23 16:15 |  |  |  | 91.09d | start no earlier than 2021-11-23 09:00 | Début 3 septembre | Sylvain Cailleau [57.1%] | 3h |  |
| 281 | 1.14.1.4 | Analyse, traitement du fichier d'extraction pour créer les bilans SANDRE et les points de mesure | 0.88d? | 2021-11-24 09:30 | 2021-11-24 18:00 |  |  |  | 90d | start no earlier than 2021-11-24 09:00 | Début 3 septembre | Sylvain Cailleau [57.1%] | 4h |  |
| 282 | 1.14.1.5 | Injections des référentiels et des données de variables | 3.5d? | 2021-11-30 09:30 | 2021-12-03 18:00 |  |  |  | 83.88d | start no earlier than 2021-11-30 09:00 | Début 3 septembre | Sylvain Cailleau | 28h |  |
| 283 | 1.14.1.6 | Reprise des attributs communs aux deux outils (description, période, type, alias, unité de mesure, métadonnées,…) en préproduction | 0.5d? | 2021-11-22 09:30 | 2021-11-22 15:00 |  |  |  | 92.12d | start no earlier than 2021-11-22 09:00 | Début 3 septembre | Sylvain Cailleau | 4h |  |
| 284 | 1.14.1.7 | Simulation des injections des données de variable dans la base AQUEDI sur un environnement de test de Studia | 0.88d? | 2021-11-26 09:30 | 2021-11-26 18:00 |  |  |  | 88.25d | start no earlier than 2021-11-26 09:00 | Début 3 septembre | Sylvain Cailleau | 7h |  |
| 285 | 1.14.1.8 | Duplication des variables avec plusieurs périodes | 0.5d? | 2021-11-23 09:30 | 2021-11-23 15:00 |  |  |  | 91.25d | start no earlier than 2021-11-23 09:00 | Début 3 septembre | Sylvain Cailleau | 4h |  |
| 286 | 1.14.2 | **Autres** | 5.25d? | 2021-12-02 09:30 | 2021-12-09 18:00 |  |  |  | 80.38d |  | Début 3 septembre |  | 13.5h |  |
| 287 | 1.14.2.1 | Chiffrage du lot 2 des évolutions | 0.88d? | 2021-12-09 09:30 | 2021-12-09 18:00 |  |  |  | 80.38d | start no earlier than 2021-12-09 05:00 | Début 3 septembre | Sylvain Cailleau [42.9%] | 3h |  |
| 288 | 1.14.2.2 | Préparation environnement de formation pour SAV | 1.31d? | 2021-12-02 09:30 | 2021-12-03 18:00 |  |  |  | 83.88d | start no earlier than 2021-12-02 09:00 | Début 3 septembre | Benoit Gallou | 10.5h |  |

| ID | WBS | Task | Duration | Start | Finish | Complete | Remaining | Total slack | Constraint | Calendar | Resources | Work | Actual work |
| --- | --- | --- | --- | --- | --- | --- | --- | --- | --- | --- | --- | --- | --- |
| 289 | 1.14.3 | **Support** | 15.75d? | 2021-11-16 09:30 | 2021-12-09 18:00 |  |  | 80.38d |  |  |  | 34h |  |
| 290 | 1.14.3.1 | Bug interne - Module des imports automatiques KO | 0.88d? | 2021-12-09 09:30 | 2021-12-09 18:00 |  |  | 80.38d | finish no earlier than 2021-12-09 18:00 | Début 3 septembre | Florin Samson | 7h |  |
| 291 | 1.14.3.2 | Bug interne - Décalage dans les colonnes et leur valeurs lors de l'export des définitions de variable d'un groupe | 0.38d? | 2021-12-02 09:30 | 2021-12-02 12:30 |  |  | 85.25d | start no earlier than 2021-12-02 09:00 | Début 3 septembre | Lamine Benfradj | 3h |  |
| 292 | 1.14.3.3 | Bug interne - WS de récupération de l'état d'avancement des validation | 0.88d? | 2021-12-03 09:30 | 2021-12-03 18:00 |  |  | 83.88d | start no earlier than 2021-12-03 09:00 | Début 3 septembre | Lamine Benfradj | 7h |  |
| 293 | 1.14.3.4 | Ticket 1883 – Problème de visualisation des droits | 1.25d? | 2021-11-16 09:30 | 2021-11-26 12:30 |  |  | 88.75d | start no earlier than 2021-11-16 09:00 | Début 3 septembre | Benoit Gallou | 10h |  |
| 294 | 1.14.3.5 | Bug interne - Module alarmes KO suite à la livraison des données fumées | 0.88d? | 2021-11-29 09:30 | 2021-11-30 15:00 |  |  | 86.88d | start no earlier than 2021-11-29 09:00 |  | Lamine Benfradj | 7h |  |
| 295 | 1.14.4 | **Dette technique** | 7d? | 2021-11-15 09:30 A | 2021-11-24 18:00 | 14% | 6d? | 90d |  |  |  | 38h | 3h |
| 296 | 1.14.4.1 | Bug interne - Impossibilité de créer un import LIMS | 0.5d? | 2021-11-24 09:30 | 2021-11-24 15:00 |  |  | 90.38d | start no earlier than 2021-11-24 09:00 | Début 3 septembre | Lamine Benfradj | 4h |  |
| 297 | 1.14.4.2 | Bug interne - Edition et validation / largeur des colonnes doit correspondre à la taille du code de variable | 0.88d? | 2021-11-15 09:30 | 2021-11-15 18:00 |  |  | 96.12d | start no earlier than 2021-11-15 09:00 | Début 3 septembre | Benoit Gallou [57.1%] | 4h |  |
| 298 | 1.14.4.3 | Bug interne – Doublons dans le tableau des graphes - Frontend | 0.88d? | 2021-11-15 09:30 | 2021-11-15 18:00 |  |  | 96.12d | start no earlier than 2021-11-15 09:00 | Début 3 septembre | Benoit Gallou [42.9%] | 3h |  |
| 299 | 1.14.4.4 | Bug interne – Alarmes sur les données fumées KO | 0.88d? | 2021-11-24 09:30 A | 2021-11-24 18:00 A | 100% |  |  | start no earlier than 2021-11-24 09:00 | Début 3 septembre | Lamine Benfradj | 3h | 3h |
| 300 | 1.14.4.5 | CRUD des variables - Optimisation du stepper | 3d? | 2021-11-19 15:00 | 2021-11-24 18:00 |  |  | 90d | start no earlier than 2021-11-19 15:00 |  | Benoit Gallou | 24h |  |
| 301 | 1.14.5 | **Evolutions SAV** | 49.88d? | 2021-09-30 09:30 | 2021-12-17 18:00 |  |  | 75.12d |  | Début 3 septembre |  | 184h |  |
| 302 | 1.14.5.1 | SAV37 – Gestion d’un nouveau format de date pour les imports CSV | 0.88d? | 2021-12-10 09:30 | 2021-12-10 18:00 |  |  | 79.5d | start no earlier than 2021-12-10 05:00 | Début 3 septembre | Florin Samson | 7h |  |
| 303 | 1.14.5.2 | SAV38 – Implémentation de l’unité d’import | 5.25d? | 2021-12-08 09:30 | 2021-12-16 18:00 |  |  | 76d | start no earlier than 2021-12-08 06:00 | Début 3 septembre | Sylvain Cailleau | 42h |  |
| 304 | 1.14.5.3 | SAV36 - Reprise de dumps et migration de données de Basta à Aquedi | 9.75d? | 2021-10-01 09:30 | 2021-11-18 18:00 |  |  | 93.5d | start no earlier than 2021-10-01 09:00 | Début 3 septembre | Sylvain Cailleau | 78h |  |
| 305 | 1.14.5.4 | Etude de la volumétrie globale des variables | 0.88d? | 2021-12-17 09:30 | 2021-12-17 18:00 |  |  | 75.12d | start no earlier than 2021-12-17 09:00 | Début 3 septembre | Sylvain Cailleau | 7h |  |
| 306 | 1.14.5.5 | SAV10 - Ajout de fonctions de calcul - Backend | 6.25d? | 2021-09-30 09:30 | 2021-10-19 18:00 |  |  | 112.75d | start no earlier than 2021-09-30 09:00 | Début 3 septembre | Sylvain Cailleau | 50h |  |
